# B组最新

How a schedule from MS Project changed from version to version. A marks actual dates.

## Version 1 (saved 2017-05-25)

Note of the change: 实验4 - 更新本周文件目录

| ID | WBS | Task | Duration | Start | Finish | Predecessors | Complete | Constraint |
| --- | --- | --- | --- | --- | --- | --- | --- | --- |
| 1 | 1 | **项目确定及介绍** | 3d | 2017-03-14 A | 2017-03-16 A |  | 100% |  |
| 2 |  | 个人工作记录模板制作 | 1d | 2017-03-14 A | 2017-03-14 A |  | 100% |  |
| 3 |  | 会议记录模板制作 | 1d | 2017-03-14 A | 2017-03-14 A |  | 100% |  |
| 4 |  | 项目前期调研，资料收集，汇总 | 2d | 2017-03-14 A | 2017-03-15 A | 2, 3 | 100% |  |
| 5 |  | 项目资料整理、精炼，项目介绍内容撰写 | 1d | 2017-03-15 A | 2017-03-15 A | 4 | 100% |  |
| 6 |  | 常见相似框架对比，找出当前框架优缺点 | 1d | 2017-03-15 A | 2017-03-15 A | 4 | 100% |  |
| 7 |  | 框架本地搭建运行，编写小程序测试 | 1d | 2017-03-15 A | 2017-03-15 A | 4 | 100% |  |
| 8 |  | PPT制作 | 1d | 2017-03-16 A | 2017-03-16 A | 5, 6, 7 | 100% |  |
| 9 | 2 | **软件需求分析** | 20d | 2017-03-18 | 2017-04-06 A | 1 | 100% |  |
| 10 |  | 项目引言 | 1d | 2017-03-19 A | 2017-03-19 A |  | 100% |  |
| 11 |  | 软件总体目标 | 1d | 2017-03-19 A | 2017-03-19 A | 10 | 100% |  |
| 12 |  | 环境需求 | 1d | 2017-03-19 A | 2017-03-19 A | 11 | 100% |  |
| 13 |  | 分析框架的请求模块 | 1d | 2017-03-19 A | 2017-03-19 A |  | 100% |  |
| 14 |  | 分析框架的响应模块 | 1d | 2017-03-21 A | 2017-03-21 A | 13 | 100% |  |
| 15 |  | 分析框架的视图模块 | 1d | 2017-03-19 A | 2017-03-19 A | 14 | 100% |  |
| 16 |  | 请求响应视图部分类图的绘制 | 1d | 2017-03-19 A | 2017-03-19 A | 13, 14, 15 | 100% |  |
| 17 |  | 分析框架的IOC模块 | 1d | 2017-03-19 A | 2017-03-19 A |  | 100% |  |
| 18 |  | IOC模块类图绘制 | 1d | 2017-03-19 A | 2017-03-19 A | 17 | 100% |  |
| 19 |  | 分析框架的配置模块 | 1d | 2017-03-19 A | 2017-03-19 A |  | 100% |  |
| 20 |  | 分析框架的数据库模块 | 1d | 2017-03-20 A | 2017-03-20 A | 19 | 100% |  |
| 21 |  | 配置部分类图绘制 | 1d | 2017-03-19 A | 2017-03-19 A | 19 | 100% |  |
| 22 |  | 数据库部分类图绘制 | 1d | 2017-03-20 A | 2017-03-20 A | 20 | 100% |  |
| 23 |  | 请求，响应，视图模块用例图绘制与RUCM编写 | 1d | 2017-03-22 A | 2017-03-22 A |  | 100% | start no earlier than 2017-03-22 |
| 24 |  | IOC部分RUCM编写与用例图绘制 | 1d | 2017-03-20 A | 2017-03-20 A | 18 | 100% |  |
| 25 |  | 配置部分RUCM编写与用例图绘制 | 1d | 2017-03-19 A | 2017-03-19 A | 21 | 100% |  |
| 26 |  | 数据库部分RUCM编写 | 1d | 2017-03-20 A | 2017-03-20 A | 22 | 100% |  |
| 27 |  | 数据库与配置部分功能需求 | 1d | 2017-03-21 A | 2017-03-21 A | 25, 26 | 100% |  |
| 28 |  | IOC部分功能需求 | 1d | 2017-03-20 A | 2017-03-20 A | 24 | 100% |  |
| 29 |  | 请求，响应部分功能需求 | 1d | 2017-03-22 A | 2017-03-22 A | 23 | 100% |  |
| 30 |  | 文档汇总 | 1d | 2017-03-22 A | 2017-03-22 A | 10, 11, 12, 16, 18, 21, 22, 23, 24, 25, 26, 27, 28, 29, 41, 43, 48, 49, 73, 75, 80, 81 | 100% |  |
| 31 |  | 文档审阅 | 1d | 2017-03-22 A | 2017-03-22 A | 30 | 100% |  |
| 32 |  | 排版 | 1d | 2017-03-23 A | 2017-03-23 A | 31 | 100% |  |
| 33 |  | PPT制作 | 1d | 2017-03-24 A | 2017-03-24 A | 31 | 100% |  |
| 34 |  | 修改项目引言部分 | 1d | 2017-03-25 A | 2017-03-25 A |  | 100% |  |
| 35 |  | 修改软件总体概述部分 | 1d | 2017-03-25 A | 2017-03-25 A |  | 100% |  |
| 36 |  | 修改环境需求部分 | 1d | 2017-03-25 A | 2017-03-25 A |  | 100% |  |
| 37 |  | 详细需求部分文档撰写 | 1d | 2017-03-26 A | 2017-03-26 A |  | 100% |  |
| 38 |  | 重新分析框架的请求模块 | 1d | 2017-03-25 A | 2017-03-25 A |  | 100% |  |
| 39 |  | 重新分析框架的响应模块 | 1d | 2017-03-25 A | 2017-03-25 A |  | 100% |  |
| 40 |  | 重新分析框架的视图模块 | 1d | 2017-03-25 A | 2017-03-25 A |  | 100% |  |
| 41 |  | 请求响应视图部分类图的抽象 | 1d | 2017-03-25 A | 2017-03-25 A | 38, 39, 40 | 100% |  |
| 42 |  | 重新分析框架的IOC模块 | 1d | 2017-03-25 A | 2017-03-25 A |  | 100% |  |
| 43 |  | IOC模块类图抽象 | 1d | 2017-03-26 A | 2017-03-26 A | 42 | 100% |  |
| 44 |  | 分析框架的拦截器模块 | 1d | 2017-03-26 A | 2017-03-26 A |  | 100% |  |
| 45 |  | 拦截器模块类图绘制 | 1d | 2017-03-27 A | 2017-03-27 A | 44 | 100% |  |
| 46 |  | 重新分析框架的配置模块 | 1d | 2017-03-25 A | 2017-03-25 A |  | 100% |  |
| 47 |  | 重新分析框架的数据库模块 | 1d | 2017-03-25 A | 2017-03-25 A |  | 100% |  |
| 48 |  | 配置部分类图抽象 | 1d | 2017-03-25 A | 2017-03-25 A | 46 | 100% |  |
| 49 |  | 数据库部分类图抽象 | 1d | 2017-03-27 A | 2017-03-27 A | 47 | 100% |  |
| 50 |  | 请求，响应，视图模块用例图绘制与RUCM重新编写 | 1d | 2017-03-25 A | 2017-03-25 A | 41 | 100% |  |
| 51 |  | IOC部分RUCM编写与用例图绘制 | 1d | 2017-03-25 A | 2017-03-25 A | 43 | 100% |  |
| 52 |  | 拦截器部分RUCM编写与用例图绘制 | 1d | 2017-03-26 A | 2017-03-26 A | 44 | 100% |  |
| 53 |  | 数据库部分RUCM编写 | 1d | 2017-03-25 A | 2017-03-25 A | 49 | 100% |  |
| 54 |  | 配置部分RUCM编写与用例图绘制 | 1d | 2017-03-25 A | 2017-03-25 A | 48 | 100% |  |
| 55 |  | 请求响应部分时序图绘制 | 1d | 2017-03-27 A | 2017-03-27 A | 41, 50 | 100% |  |
| 56 |  | 请求响应部分状态图绘制 | 1d | 2017-03-27 A | 2017-03-27 A | 41, 50 | 100% |  |
| 57 |  | IOC部分时序图绘制 | 1d | 2017-03-27 A | 2017-03-27 A | 43, 51 | 100% |  |
| 58 |  | IOC部分状态图绘制 | 1d | 2017-03-27 A | 2017-03-27 A | 43, 51 | 100% |  |
| 59 |  | 拦截器部分时序图绘制 | 1d | 2017-03-28 A | 2017-03-28 A | 45, 52 | 100% |  |
| 60 |  | 拦截器部分状态图绘制 | 1d | 2017-03-26 A | 2017-03-26 A | 45, 52 | 100% |  |
| 61 |  | 数据库部分时序图绘制 | 1d | 2017-03-25 A | 2017-03-25 A | 49, 53 | 100% |  |
| 62 |  | 数据库部分状态图绘制 | 1d | 2017-03-27 A | 2017-03-27 A | 49, 53 | 100% |  |
| 63 |  | 配置部分时序图绘制 | 1d | 2017-03-28 A | 2017-03-28 A | 48, 54 | 100% |  |
| 64 |  | 配置部分状态图绘制 | 1d | 2017-03-28 A | 2017-03-28 A | 48, 54 | 100% |  |
| 65 |  | 文档汇总及审阅 | 1d | 2017-03-29 A | 2017-03-29 A |  | 100% |  |
| 66 |  | 文档排版 | 1d | 2017-03-29 A | 2017-03-29 A | 65 | 100% |  |
| 67 |  | PPT制作 | 1d | 2017-03-30 A | 2017-03-30 A |  | 100% |  |
| 68 |  | 修改文档中出现的问题 | 1d | 2017-04-01 A | 2017-04-01 A |  | 100% |  |
| 69 |  | 会议记录整理 | 1d | 2017-04-01 A | 2017-04-01 A |  | 100% |  |
| 70 |  | 重新分析框架的请求模块 | 1d | 2017-04-05 A | 2017-04-05 A |  | 100% |  |

| ID | WBS | Task | Duration | Start | Finish | Predecessors | Complete |
| --- | --- | --- | --- | --- | --- | --- | --- |
| 71 |  | 重新分析框架的响应模块 | 1d | 2017-04-05 A | 2017-04-05 A |  | 100% |
| 72 |  | 重新分析框架的视图模块 | 1d | 2017-04-05 A | 2017-04-05 A |  | 100% |
| 73 |  | 请求响应视图部分类图的抽象 | 1d | 2017-04-05 A | 2017-04-05 A | 70, 71, 72 | 100% |
| 74 |  | 重新分析框架的IOC模块 | 1d | 2017-04-05 A | 2017-04-05 A |  | 100% |
| 75 |  | IOC模块类图抽象 | 1d | 2017-04-05 A | 2017-04-05 A | 74 | 100% |
| 76 |  | 分析框架的拦截器模块 | 1d | 2017-04-01 A | 2017-04-01 A |  | 100% |
| 77 |  | 拦截器模块类图重新绘制 | 1d | 2017-04-01 A | 2017-04-01 A | 76 | 100% |
| 78 |  | 重新分析框架的配置模块 | 1d | 2017-04-02 A | 2017-04-02 A |  | 100% |
| 79 |  | 重新分析框架的数据库模块 | 1d | 2017-04-02 A | 2017-04-02 A |  | 100% |
| 80 |  | 配置部分类图抽象 | 1d | 2017-04-02 A | 2017-04-02 A | 78 | 100% |
| 81 |  | 数据库部分类图抽象 | 1d | 2017-04-02 A | 2017-04-02 A | 79 | 100% |
| 82 |  | 请求，响应，视图模块用例图绘制与RUCM重新编写 | 1d | 2017-04-05 A | 2017-04-05 A | 73 | 100% |
| 83 |  | IOC部分RUCM编写与用例图绘制 | 1d | 2017-04-05 A | 2017-04-05 A | 75 | 100% |
| 84 |  | 拦截器部分RUCM编写与用例图绘制 | 1d | 2017-04-05 A | 2017-04-05 A | 76 | 100% |
| 85 |  | 数据库部分RUCM编写 | 1d | 2017-04-04 A | 2017-04-04 A | 81 | 100% |
| 86 |  | 配置部分RUCM编写与用例图绘制 | 1d | 2017-04-02 A | 2017-04-02 A | 80 | 100% |
| 87 |  | 请求响应部分时序图绘制与说明撰写 | 1d | 2017-04-05 A | 2017-04-05 A | 82 | 100% |
| 88 |  | IOC部分时序图绘制与说明撰写 | 1d | 2017-04-05 A | 2017-04-05 A | 75, 83 | 100% |
| 89 |  | 拦截器部分时序图绘制与说明撰写 | 1d | 2017-04-05 A | 2017-04-05 A | 77, 84 | 100% |
| 90 |  | 数据库部分时序图绘制与说明撰写 | 1d | 2017-04-05 A | 2017-04-05 A | 81, 85 | 100% |
| 91 |  | 数据库部分状态图绘制与说明撰写 | 1d | 2017-04-05 A | 2017-04-05 A | 81, 85 | 100% |
| 92 |  | 配置部分时序图绘制与说明撰写 | 1d | 2017-04-05 A | 2017-04-05 A | 80, 86 | 100% |
| 93 |  | Blade框架状态图绘制与说明撰写 | 1d | 2017-04-05 A | 2017-04-05 A | 80, 86 | 100% |
| 94 |  | 文档汇总及审阅 | 1d | 2017-04-05 A | 2017-04-05 A |  | 100% |
| 95 |  | 文档排版 | 1d | 2017-04-05 A | 2017-04-05 A | 94 | 100% |
| 96 |  | PPT制作 | 1d | 2017-04-06 A | 2017-04-06 A |  | 100% |
| 97 | 3 | **软件需求评审** | 8d | 2017-04-07 | 2017-04-14 A | 9 | 100% |
| 98 |  | 评审模板设计 | 1d | 2017-04-03 A | 2017-04-03 A |  | 100% |
| 99 |  | 评审整理 | 1d | 2017-04-03 A | 2017-04-03 A |  | 100% |
| 100 |  | 软件评审 | 1d | 2017-04-06 A | 2017-04-06 A |  | 100% |
| 101 |  | 软件评审 | 1d | 2017-04-06 A | 2017-04-06 A |  | 100% |
| 102 |  | 软件评审 | 1d | 2017-04-06 A | 2017-04-06 A |  | 100% |
| 103 |  | 软件评审 | 1d | 2017-04-06 A | 2017-04-06 A |  | 100% |
| 104 |  | 出现问题整理 | 1d | 2017-04-10 A | 2017-04-10 A |  | 100% |
| 105 |  | 修改文档格式问题 | 1d | 2017-04-13 A | 2017-04-13 A |  | 100% |
| 106 |  | 修改C组提出的问题 | 1d | 2017-04-13 A | 2017-04-13 A |  | 100% |
| 107 |  | 修改D组提出的问题 | 1d | 2017-04-13 A | 2017-04-13 A |  | 100% |
| 108 |  | 业务需求 | 1d | 2017-04-11 A | 2017-04-11 A |  | 100% |
| 109 |  | 排版 | 1d | 2017-04-14 A | 2017-04-14 A |  | 100% |
| 110 |  | PPT | 1d | 2017-04-14 A | 2017-04-14 A |  | 100% |
| 111 | 4 | **软件需求复评审** | 8d | 2017-04-15 | 2017-04-22 | 97 | 100% |
| 112 |  | 对A和G组评价 | 1d | 2017-04-19 A | 2017-04-19 A |  | 100% |
| 113 |  | 对别的组评价整理 | 1d | 2017-04-20 A | 2017-04-20 A |  | 100% |
| 114 | 5 | **软件产品改进与展示** | 21d | 2017-04-22 A | 2017-05-12 A | 111 | 100% |
| 115 | 5.1 | **第一次软件产品改进** | 7d | 2017-04-22 A | 2017-04-28 A |  | 100% |
| 116 |  | 会议记录总结 | 1d | 2017-04-22 A | 2017-04-22 A |  | 100% |
| 117 |  | 需求改进 | 1d | 2017-04-23 A | 2017-04-23 A | 116 | 100% |
| 118 |  | 对A组和G组评价 | 1d | 2017-04-25 A | 2017-04-25 A |  | 100% |
| 119 |  | 编写使用手册 | 1d | 2017-04-27 A | 2017-04-27 A |  | 100% |
| 120 |  | 排版 | 1d | 2017-04-28 A | 2017-04-28 A | 117 | 100% |
| 121 |  | PPT制作 | 1d | 2017-04-28 A | 2017-04-28 A |  | 100% |
| 122 | 5.2 | **第二次软件产品改进** | 7d | 2017-04-29 A | 2017-05-05 A |  | 100% |
| 123 |  | 会议记录总结 | 1d | 2017-04-30 A | 2017-04-30 A |  | 100% |
| 124 |  | 软件评审总结 | 1d | 2017-05-03 A | 2017-05-03 A |  | 100% |
| 125 |  | 软件需求规格说明书修改说明简表 | 1d | 2017-05-03 A | 2017-05-03 A |  | 100% |
| 126 |  | 类图时序用例对应表 | 1d | 2017-05-03 A | 2017-05-03 A |  | 100% |
| 127 |  | 需求说明书修改 | 1d | 2017-05-03 A | 2017-05-03 A |  | 100% |
| 128 |  | 学习Blade Ioc初始化方式 | 1d | 2017-04-29 A | 2017-04-29 A |  | 100% |
| 129 |  | 实现bladetest | 1d | 2017-05-02 A | 2017-05-02 A |  | 100% |
| 130 |  | 添加需求改进文档 | 1d | 2017-05-03 A | 2017-05-03 A |  | 100% |
| 131 |  | 排版 | 1d | 2017-05-04 A | 2017-05-04 A |  | 100% |
| 132 |  | PPT制作 | 1d | 2017-05-05 A | 2017-05-05 A |  | 100% |
| 133 | 5.3 | **第三次软件产品改进** | 1d | 2017-05-07 | 2017-05-07 |  | 100% |
| 134 |  | 会议记录总结 | 1d | 2017-05-06 A | 2017-05-06 A |  | 100% |
| 135 |  | 软件改进 | 1d | 2017-05-09 A | 2017-05-09 A |  | 100% |
| 136 |  | 改进部分需求说明书撰写 | 1d | 2017-05-10 A | 2017-05-10 A |  | 100% |
| 137 |  | 排版 | 1d | 2017-05-11 A | 2017-05-11 A |  | 100% |
| 138 |  | 测试用例撰写 | 1d | 2017-05-12 A | 2017-05-12 A |  | 100% |
| 139 |  | PPT制作 | 1d | 2017-05-12 A | 2017-05-12 A |  | 100% |
| 140 | 6 | **软件测试分析** | 6d | 2017-05-13 A | 2017-05-18 A | 114 | 100% |

| ID | WBS | Task | Duration | Start | Finish | Predecessors | Complete | Total float |
| --- | --- | --- | --- | --- | --- | --- | --- | --- |
| 141 |  | 会议记录总结 | 1d | 2017-05-13 A | 2017-05-13 A |  | 100% |  |
| 142 |  | 测试用例撰写 | 1d | 2017-05-17 A | 2017-05-17 A |  | 100% |  |
| 143 |  | 排版 | 1d | 2017-05-18 A | 2017-05-18 A |  | 100% |  |
| 144 |  | 整理评审 | 1d | 2017-05-18 A | 2017-05-18 A |  | 100% |  |
| 145 |  | PPT制作 | 1d | 2017-05-18 A | 2017-05-18 A |  | 100% |  |
| 146 | 7 | **软件测试评审** | 69d | 2017-03-17 A | 2017-05-24 | 140 | 83% | 0d |
| 147 |  | 会议记录整理 | 1d | 2017-05-20 A | 2017-05-20 A |  | 100% |  |
| 148 |  | 测试文档修改 | 1d | 2017-05-23 A | 2017-05-23 A |  | 100% |  |
| 149 |  | 具体测试 | 2d | 2017-05-23 A | 2017-05-24 A |  | 100% |  |
| 150 |  | 排版 | 1d | 2017-03-18 | 2017-03-18 | 148 |  |  |
| 151 |  | 对A与G组评审 | 1d | 2017-05-24 A | 2017-05-24 A |  | 100% |  |
| 152 |  | 整理评审 | 0d | 2017-03-17 | 2017-03-17 |  |  |  |
| 153 |  | PPT制作 | 0d | 2017-03-17 | 2017-03-17 |  |  |  |
| 154 | 8 | **软件测试复评审** | 1d? | 2017-03-14 | 2017-03-14 | 146 |  | 0d |
| 155 |  | 会议记录整理 | 0d | 2017-03-14 | 2017-03-14 |  |  |  |
| 156 |  | 测试文档错误修改 | 0d | 2017-03-14 | 2017-03-14 | 155 |  |  |
| 157 |  | 排版 | 1d | 2017-03-14 | 2017-03-14 | 156 |  |  |
| 158 |  | 对A组评审 | 0d? | 2017-03-14 | 2017-03-14 |  |  |  |
| 159 |  | 对G组评审 | 0d? | 2017-03-14 | 2017-03-14 |  |  |  |
| 160 |  | 整理评审 | 0d | 2017-03-14 | 2017-03-14 |  |  |  |
| 161 |  | PPT制作 | 0d | 2017-03-14 | 2017-03-14 |  |  |  |
| 162 | 9 | **软件演示与测评** | 1d | 2017-03-14 | 2017-03-14 | 114, 154, 1 |  |  |
| 163 |  | 会议记录整理 | 0d | 2017-03-14 | 2017-03-14 |  |  |  |
| 164 |  | 软件错误修改 | 0d | 2017-03-14 | 2017-03-14 |  |  |  |
| 165 |  | 软件调试 | 0d | 2017-03-14 | 2017-03-14 |  |  |  |
| 166 |  | 软件总结文档撰写 | 1d | 2017-04-24 | 2017-04-25 |  |  |  |
| 167 |  | PPT制作 | 0d | 2017-03-14 | 2017-03-14 |  |  |  |
| 168 | 10 | **软件进度计划于控制** | 101d | 2017-03-14 A | 2017-06-22 |  | 94% |  |
| 169 |  | 第一次作业计划 | 7d | 2017-03-15 A | 2017-03-21 A |  | 100% |  |
| 170 |  | 第二次作业计划 | 7d | 2017-03-18 A | 2017-03-24 A |  | 100% |  |
| 171 |  | 第三次作业计划 | 7d | 2017-03-25 A | 2017-03-31 A |  | 100% |  |
| 172 |  | 第四次作业计划 | 7d | 2017-04-01 A | 2017-04-07 A |  | 100% |  |
| 173 |  | 第五次作业计划 | 7d | 2017-04-08 A | 2017-04-14 A |  | 100% |  |
| 174 |  | 第六次作业计划 | 7d | 2017-04-15 A | 2017-04-21 A |  | 100% |  |
| 175 | 10.7 | **软件产品改进与展示project计划** | 20d | 2017-04-23 A | 2017-05-12 A |  | 100% |  |
| 176 |  | 第一次project管理 | 1.25d | 2017-04-23 A | 2017-04-24 A |  | 100% |  |
| 177 |  | 第二次project管理 | 1d | 2017-05-05 A | 2017-05-05 A |  | 100% |  |
| 178 |  | 第三次project管理 | 1d | 2017-05-12 A | 2017-05-12 A |  | 100% |  |
| 179 |  | 软件测试分析project计划 | 1d | 2017-05-19 A | 2017-05-19 A |  | 100% |  |
| 180 |  | 软件测试评审project计划 | 1d | 2017-03-14 | 2017-03-14 |  |  |  |
| 181 |  | 软件测试复评审project计划 | 1d? | 2017-03-14 | 2017-03-14 |  |  |  |
| 182 |  | 软件演示与测评project计划 | 1d? | 2017-03-14 | 2017-03-14 |  |  |  |
| 183 | 11 | **配置管理** | 101d | 2017-03-14 A | 2017-06-22 |  | 92% |  |
| 184 |  | 第一次配置管理 | 7d | 2017-03-18 A | 2017-03-24 A |  | 100% |  |
| 185 |  | 第二次配置管理 | 7d | 2017-03-25 A | 2017-03-31 A |  | 100% |  |
| 186 |  | 第三次配置管理 | 7d | 2017-04-01 A | 2017-04-07 A |  | 100% |  |
| 187 |  | 第四次配置管理 | 7d | 2017-04-08 A | 2017-04-14 A |  | 100% |  |
| 188 | 11.5 | **第五次配置管理** | 7d | 2017-04-15 | 2017-04-21 A |  | 100% |  |
| 189 |  | 设置工作记录网站 | 2d | 2017-04-20 A | 2017-04-21 A |  | 100% |  |
| 190 | 11.6 | **软件产品改进与展示配置管理** | 1d? | 2017-03-14 | 2017-03-14 |  | 100% |  |
| 191 |  | 第一次配置管理 | 1d? | 2017-04-27 A | 2017-04-27 A |  | 100% |  |
| 192 |  | 第二次配置管理 | 1d? | 2017-05-04 A | 2017-05-04 A |  | 100% |  |
| 193 |  | 第三次配置管理 | 1d | 2017-05-11 A | 2017-05-11 A |  | 100% |  |
| 194 |  | 软件测试分析配置管理 | 1d | 2017-05-14 A | 2017-05-14 A |  | 100% |  |
| 195 |  | 软件测试评审配置管理 | 1d? | 2017-03-14 | 2017-03-14 |  |  |  |
| 196 |  | 软件测试复评审配置管理 | 1d? | 2017-03-14 | 2017-03-14 |  |  |  |
| 197 |  | 软件演示与测评配置管理 | 1d? | 2017-03-14 | 2017-03-14 |  |  |  |
| 198 | 12 | **综合实验分析和总结** | 101d | 2017-03-14 A | 2017-06-22 |  | 75% |  |
| 199 |  | 第一次综合实验分析 | 1d | 2017-03-23 A | 2017-03-23 A |  | 100% |  |
| 200 |  | 第二次综合实验分析 | 1d | 2017-03-30 A | 2017-03-30 A |  | 100% |  |
| 201 |  | 第三次综合实验分析 | 1d | 2017-04-06 A | 2017-04-06 A |  | 100% |  |
| 202 |  | 第四次综合实验分析 | 1d | 2017-04-13 A | 2017-04-13 A |  | 100% |  |
| 203 |  | 第五次综合实验分析 | 1d | 2017-04-20 A | 2017-04-20 A |  | 100% |  |
| 204 | 12.6 | **软件产品改进与展示管理分析** | 21d | 2017-04-22 | 2017-05-12 A |  | 100% |  |
| 205 | 12.6.1 | **第一次管理** | 1d | 2017-04-27 A | 2017-04-27 A |  | 100% |  |
| 206 |  | 完善统计工具开发 | 1d | 2017-04-27 A | 2017-04-27 A |  | 100% |  |
| 207 |  | 第二次管理 | 1d | 2017-05-05 A | 2017-05-05 A |  | 100% |  |
| 208 |  | 第三次管理 | 1d | 2017-05-12 A | 2017-05-12 A |  | 100% |  |
| 209 |  | 软件测试分析实验分析 | 1d | 2017-05-19 A | 2017-05-19 A |  | 100% |  |
| 210 |  | 软件测试评审实验分析 | 1d | 2017-03-14 | 2017-03-14 |  |  |  |

| ID | Task | Duration | Start | Finish |
| --- | --- | --- | --- | --- |
| 211 | 软件测试复评审实验分析 | 1d | 2017-03-14 | 2017-03-14 |
| 212 | 软件演示与测评实验分析 | 1d | 2017-03-14 | 2017-03-14 |

## Version 2 (saved 2017-05-25)

Note of the change: 实验4 - 更新文件目录结构

Last finish stays 2017-06-22. Complete tasks 168 → 174.

Changed:

| ID | Task | Start | Finish | Duration | Complete | Total float | Other |
| --- | --- | --- | --- | --- | --- | --- | --- |
| 146 | **软件测试评审** | 2017-03-17 A → 2017-05-20 A (+64d) | 2017-05-24 → 2017-05-25 A (+1d) | 69d → 6d | 83% → 100% | 0d → none |  |
| 150 | 排版 | 2017-03-18 → 2017-05-25 A (+68d) | 2017-03-18 → 2017-05-25 A (+68d) |  | 0% → 100% |  | resources 胡明昊 → 胡明昊 [10%] |
| 152 | 整理评审 | 2017-03-17 → 2017-05-25 A (+69d) | 2017-03-17 → 2017-05-25 A (+69d) | 0d → 1d | 0% → 100% |  | resources 汪晓燕 → 汪晓燕 [8%] |
| 153 | PPT制作 | 2017-03-17 → 2017-05-25 A (+69d) | 2017-03-17 → 2017-05-25 A (+69d) | 0d → 1d | 0% → 100% |  | resources 胡明昊 → 穆鹏飞 [30%] |
| 168 | **软件进度计划于控制** |  |  |  | 94% → 96% |  |  |
| 180 | 软件测试评审project计划 | 2017-03-14 → 2017-05-25 A (+72d) | 2017-03-14 → 2017-05-25 A (+72d) |  | 0% → 100% |  | resources 穆鹏飞 → 穆鹏飞 [25%] |
| 183 | **配置管理** |  |  |  | 92% → 95% |  |  |
| 195 | 软件测试评审配置管理 | 2017-03-14 → 2017-05-25 A (+72d) | 2017-03-14 → 2017-05-25 A (+72d) | 1d? → 1d | 0% → 100% |  | resources 胡明昊 → 胡明昊 [15%] |
| 198 | **综合实验分析和总结** |  |  |  | 75% → 83% |  |  |
| 210 | 软件测试评审实验分析 | 2017-03-14 → 2017-05-25 A (+72d) | 2017-03-14 → 2017-05-25 A (+72d) |  | 0% → 100% |  | resources 汪晓燕; 刘晔 → 汪晓燕 [10%] |
